/*
 * This file is a project plan for the OpenShot Library
 *
 * Please see the TaskJuggler manual for a more detailed
 * description of the various syntax elements. You can find more
 * information about TaskJuggler at http://www.taskjuggler.org!
 */
project yourID "OpenShot Library" "1.0" 2012-06-20 - 2012-10-08 {
  # Hide the clock time. Only show the date.
  timeformat "%Y-%m-%d"
  # The currency for all money values is EUR.
  currency "USD"

  # We want to compare the baseline scenario, to one with a slightly
  # delayed start.
  scenario plan "Plan" {
    scenario delayed "Delayed"
  }
}

# Put your flag declarations here. You can flag task, resources and
# accounts to use them as filter criteria when generating reports.
# flags important, dontcare
flags team

# In order to do a simple profit and loss analysis of the project we
# specify accounts. One for the development costs, one for the
# documentation costs and one account to credit the customer payments
# to.
account costs "Costs" cost
account rev "Payments" revenue

# Global vacations go here
# vacation "Labor Day" 2005-09-05
# 2 days Christmas break (27th not included!)
# vacation "Christmas" 2005-12-25 - 2005-12-27

# The daily default rate of all resources. This can be overriden for each
# resource. We specify this, so that we can do a good calculation of
# the costs of the project.
rate 300.0

# Put your resource definitions here:
resource dev "Developers" {
  resource jonathan "Jonathan Thomas"

  flags team
}

# Now we specify the work packages. The whole project is described as
# a task that contains sub tasks. These sub tasks are then broken down
# into smaller tasks and so on. The innermost tasks describe the real
# work and have resources allocated to them. Many attributes of tasks
# are inherited from the enclosing task. This saves you a lot of
# writing.
task lib "OpenShot Library" {
  start 2012-06-20

  # All work related costs will be booked to this account unless the
  # sub tasks specifies it differently.
  account costs

  task site "Website"
  {
      priority 600
      task website_theme "Choose website theme" {
        effort 1d
        allocate jonathan
        complete 100
      }
      task website_django "Create initial django project" {
        effort 2d
        allocate jonathan
        complete 100
      }
  }

  task reader "Reader"
  {
      priority 500
      task reader_openmp "Complete OpenMP integration" {
        effort 4d
        allocate jonathan
        complete 90
      }
      task reader_resample_bug "Fix audio resampling bug" {
        effort 3d
        allocate jonathan
        complete 100
      }
      task reader_refactor_audio "Refactor ProcessAudioPacket method to be simpler" {
        effort 1d
        allocate jonathan
        complete 0
      }
      task reader_unit_tests "Create unit tests for all public Reader methods" {
        effort 2d
        allocate jonathan
        complete 0
      }
  }

  task writer "Writer"
  {
      priority 400

      task writer_design "Design writer public interface" {
        effort 2d
        allocate jonathan
        complete 0
      }
      task writer_initial "Create initial writer classes & headers" {
        effort 2d
        allocate jonathan
        complete 0
      }
      task writer_file_or_mem "Build support for file-based or memory-based streams" {
        effort 1d
        allocate jonathan
        complete 0
      }
      task writer_build "Implement the writer classes and get it all working" {
        effort 7d
        allocate jonathan
        complete 0
      }
      task writer_unit_tests "Create unit tests for all public Writer methods" {
        effort 2d
        allocate jonathan
        complete 0
      }
  }

  task stream "Stream Video"
  {
      priority 300

      task stream_file_based "Deliver file-based WebM (VP8) video to browser (with Django)" {
        effort 2d
        allocate jonathan
        complete 0
      }
      task stream_mem_based "Deliver memory-based WebM (VP8) video to browser (with Django)" {
        effort 2d
        allocate jonathan
        complete 0
      }

      task stream_upload "Create form to upload video (with Django)" {

        task stream_upload_encode "Upload & encode video as WebM (with libopenshot)" {
          effort 2d
          allocate jonathan
          complete 0
        }
        task stream_upload_thumbnail "Update thumbnail image every few seconds (during encode)" {
          effort 2d
          allocate jonathan
          complete 0
        }
      }

      task stream_options "Create form to set video options (with Django)" {

        task stream_options_in_out "Trim: IN & OUT" {
          effort 1d
          allocate jonathan
          complete 0
        }
        task stream_options_effects "Effects: Blur & Grayscale" {
          effort 1d
          allocate jonathan
          complete 0
        }
        task stream_options_watermark "Watermark image (with gravity)" {
          effort 1d
          allocate jonathan
          complete 0
        }
      }

  }


}


# A traditional Gantt Chart for the TaskJugglerUI
taskreport "Gantt Chart" {
  headline "Project Gantt Chart"
  columns hierarchindex, name, start, end, effort, duration, chart
  # For this report we like to have the abbreviated weekday in front
  # of the date. %a is the tag for this.
  timeformat "%a %Y-%m-%d"
  loadunit days
  hideresource 1
}

# A list of tasks showing the resources assigned to each task.
taskreport "Task Usage" {
  headline "Task Usage Report"
  columns hierarchindex, name, start, end, effort { title "Work" }, duration,
          cost, revenue
  timeformat "%Y-%m-%d"
  loadunit days
  hideresource 0
}

# A list of all tasks with the percentage complete for each task
taskreport "Tracking Gantt" {
  headline "Tracking Gantt Chart"
  columns hierarchindex, name, start, end, effort { title "Work" }, duration,
          completed, chart
  timeformat "%a %Y-%m-%d"
  loadunit days
  hideresource 1
}

# A graph showing resource allocation. It identifies whether each
# resource is under- or over-allocated for.
resourcereport "Resource Graph" {
  headline "Resource Allocation Graph"
  columns no, name, rate, utilization, freeload, chart
  loadunit days
  hidetask 1
}

# A list of all project resources, both human and material resources,
# together with the costs for each.
resourcereport "Resource Sheet" {
  headline "Resource Sheet"
  columns no, name, efficiency, id, maxeffort, rate
  loadunit days
  hidetask 1
}

# A list of resources and each task associated with each resource.
resourcereport "Resource Usage" {
  headline "Resource Usage Report"
  columns no, name, utilization, freeload, cost
  loadunit days
  hidetask 0
}

# This report looks like a regular calendar that shows the tasks by
# their dates.
htmlweeklycalendar "Calendar.html" {
}

# This report is a status report for the current week. It also
# provides an outlook for the next week.
htmlstatusreport "Status-Report.html" {
}

# A P&L report for the project.
htmlaccountreport "Accounting.html" {
  # Besides the number of the account and the name we have a column
  # with the total values (at the end of the project) and the values
  # for each month of the project.
  columns no, name, scenario, total, monthly
  headline "P&L for the Project"
  caption "The table shows the profit and loss
           analysis as well as the cashflow situation of the Accounting
           Software Project."
  # Since this is a cashflow calculation we show accumulated values
  # per account.
  accumulate
  scenarios plan, delayed
}